Schedule from OmniPlan.
Project start 2017-05-24

## Resources

| Resource | Group |
| --- | --- |
| 资源 1 | staff |
| 设备 1 | equipment |
| 素材 1 | material |
| 群组 1 | group |
| 郭茜 | staff |
| 王琛 | staff |
| 白凯 | staff |
| 赵一鸣 | staff |
| 袁伟明 | staff |
| 刘旭 | staff |
| ？？ | staff |
| ？？ | staff |
| 江彤 | staff |
| 敬晓阳 | staff |
| 张宁 | staff |
| 贾双喜 | staff |
| 现场研发1？ | staff |
| 现场研发2？ | staff |
| 现场研发3？ | staff |
| 虞里杉 | staff |
| 现场研发4？ | staff |
| 柴宗三 | staff |
| 现场研发5？ | staff |
| 王栋 | staff |

## Schedule

| ID | WBS | Task | Predecessors | Constraint | Resources | Work |
| --- | --- | --- | --- | --- | --- | --- |
| 1 | 1 | **前端开发－橘云多租户管理平台** |  | start no earlier than 2017-06-01 |  |  |
| 2 | 1.1 | **单点登录功能开发** |  | start no earlier than 2017-05-25 |  |  |
| 3 | 1.1.1 | 调用中信云用户中心登录认证接口 |  | start no earlier than 2017-05-26 | 江彤 | 16h |
| 4 | 1.1.2 | 信云智控制台跳转到统一管控界面 | 3 | start no earlier than 2017-05-26 | 江彤 | 8h |
| 5 | 1.1.3 | 橘云多租户管理从统一管控平台无密码登录 | 4 | start no earlier than 2017-05-26 | 江彤 | 16h |
| 6 | 1.1.4 | 橘云Ambari运维平台从统一管控页面无密码登录 | 5 | start no earlier than 2017-05-26 | 江彤 | 16h |
| 7 | 1.2 | **租户管理页面框架开发** |  | start no earlier than 2017-05-25 |  |  |
| 8 | 1.2.1 | 租户管理页面顶级导航栏功能开发 |  | start no earlier than 2017-05-26 | 虞里杉 | 32h |
| 9 | 1.2.2 | 租户管理页面前端开发框架准备 | 8 | start no earlier than 2017-05-26 | 虞里杉 | 16h |
| 10 | 1.2.3 | 初始化一个系统管理员用户 | 9 | start no earlier than 2017-05-26 | 虞里杉 | 8h |
| 11 | 1.2.4 | 与单点登录服务的集成 | 10 | start no earlier than 2017-05-26 | 虞里杉 | 8h |
| 12 | 1.3 | **统一管控平台开发** |  | start no earlier than 2017-05-25 |  |  |
| 13 | 1.3.1 | 统一管控平台页面设计 |  | start no earlier than 2017-05-26 | 敬晓阳 | 24h |
| 14 | 1.3.2 | 统一管控平台页面开发 | 13 | start no earlier than 2017-05-26 | 敬晓阳 | 32h |
| 15 | 1.3.3 | 多租户平台管理页面接入 | 14 | start no earlier than 2017-05-26 | 敬晓阳 | 16h |
| 16 | 1.3.4 | 运维管理平台页面接入 | 15 | start no earlier than 2017-05-26 | 敬晓阳 | 8h |
| 17 | 1.3.5 | 第三方服务运维平台梳理 | 16 | start no earlier than 2017-05-26 | 敬晓阳 | 16h |
| 18 | 1.3.6 | 第三方服务运维平台接入 | 17 | start no earlier than 2017-05-26 | 敬晓阳 | 24h |
| 19 | 1.4 | **租户资源使用情况监控页面开发** | 2 | start no earlier than 2017-05-25 |  |  |
| 20 | 1.4.1 | 租户级的HDFS资源使用信息获取 |  | start no earlier than 2017-05-26 | 江彤 | 16h |
| 21 | 1.4.2 | 租户级的YARN资源使用信息获取 | 20 | start no earlier than 2017-05-26 | 江彤 | 8h |
| 22 | 1.4.3 | 租户级的Hive资源使用信息获取 | 21 | start no earlier than 2017-05-26 | 江彤 | 16h |
| 23 | 1.4.4 | 租户级的HBase资源使用信息获取 | 22 | start no earlier than 2017-05-26 | 江彤 | 8h |
| 24 | 1.4.5 | 租户级的Kafka资源使用信息获取 | 23 | start no earlier than 2017-05-26 | 江彤 | 16h |
| 25 | 1.4.6 | 租户级的Oracle资源使用信息获取 | 24 | start no earlier than 2017-05-26 | 江彤 |  |
| 26 | 1.4.7 | 租户级的GreenPlum 资源使用信息获取 | 25 | start no earlier than 2017-05-26 | 江彤 | 16h |
| 27 | 1.4.8 | 租户级的MongoDB资源使用信息获取 | 26 | start no earlier than 2017-05-26 | 江彤 | 8h |
| 28 | 1.4.9 | 租户级的Neo4j资源使用信息获取 | 27 | start no earlier than 2017-05-26 | 江彤 | 16h |
| 29 | 1.4.10 | 租户级的RabbitMQ资源使用信息获取 | 28 | start no earlier than 2017-05-26 | 江彤 | 8h |

| ID | WBS | Task | Predecessors | Constraint | Resources | Work |
| --- | --- | --- | --- | --- | --- | --- |
| 30 | 1.5 | **租户角色管理，分配页面开发** |  | start no earlier than 2017-05-25 |  |  |
| 31 | 1.5.1 | 租户用户列表页面开发 |  | start no earlier than 2017-05-26 | 张宁 | 32h |
| 32 | 1.5.2 | 租户授权页面开发 | 31 | start no earlier than 2017-05-26 | 张宁 | 32h |
| 33 | 1.5.3 | 租户授权时获取云用户中心用户列表功能开发 | 32 | start no earlier than 2017-05-26 | 张宁 | 16h |
| 34 | 1.6 | **租户基本信息页面开发** | 12 | start no earlier than 2017-05-25 |  |  |
| 35 | 1.6.1 | 租户基本信息展示 |  | start no earlier than 2017-05-26 | 敬晓阳 | 24h |
| 36 | 1.6.2 | 租户包涵的服务展示 | 35 | start no earlier than 2017-05-26 | 敬晓阳 | 32h |
| 37 | 1.7 | **服务管理页面开发** |  | start no earlier than 2017-05-25 |  |  |
| 38 | 1.7.1 | 服务列表页面开发 |  | start no earlier than 2017-05-26 | 贾双喜 | 32h |
| 39 | 1.7.2 | 服务列表页面与后端集成 | 38 | start no earlier than 2017-05-26 | 贾双喜 | 8h |
| 40 | 1.7.3 | 服务添加页面框架开发 | 39 | start no earlier than 2017-05-26 | 贾双喜 | 8h |
| 41 | 1.7.4 | HDFS服务添加页面增强 | 40 | start no earlier than 2017-05-26 | 贾双喜 | 8h |
| 42 | 1.7.5 | YARN服务添加页面增强 | 41 | start no earlier than 2017-05-26 | 贾双喜 | 8h |
| 43 | 1.7.6 | Hive服务添加页面增强 | 42 | start no earlier than 2017-05-26 | 贾双喜 | 8h |
| 44 | 1.7.7 | HBase服务添加页面增强 | 43 | start no earlier than 2017-05-26 | 贾双喜 | 8h |
| 45 | 1.7.8 | Kafka服务添加页面增强 | 44 | start no earlier than 2017-05-26 | 贾双喜 | 8h |
| 46 | 1.7.9 | Oracle服务添加页面增强 | 45 | start no earlier than 2017-05-26 |  |  |
| 47 | 1.7.10 | GreenPlum服务添加页面增强 | 46 | start no earlier than 2017-05-26 | 贾双喜 |  |
| 48 | 1.7.11 | MongoDB服务添加页面增强 | 47 | start no earlier than 2017-05-26 | 贾双喜 |  |
| 49 | 1.7.12 | Neo4j服务添加页面增强 | 48 | start no earlier than 2017-05-26 | 贾双喜 |  |
| 50 | 1.7.13 | RabbitMQ服务添加页面增强 | 49 | start no earlier than 2017-05-26 | 贾双喜 |  |
| 51 | 1.8 | **角色管理页面开发** | 37 | start no earlier than 2017-05-25 |  |  |
| 52 | 1.8.1 | 角色列表页面开发 |  | start no earlier than 2017-05-26 | 贾双喜 | 24h |
| 53 | 1.8.2 | 角色列表获取API调用 | 52 | start no earlier than 2017-05-26 | 贾双喜 | 16h |

| ID | WBS | Task | Predecessors | Constraint | Resources | Work |
| --- | --- | --- | --- | --- | --- | --- |
| 54 | 2 | **服务端开发－橘云多租户管理平台** |  | start no earlier than 2017-06-01 |  |  |
| 55 | 2.1 | **服务管理功能开发** |  | start no earlier than 2017-05-25 |  |  |
| 56 | 2.1.1 | 服务和服务实例接口定义 |  | start no earlier than 2017-05-26 | 白凯 | 16h |
| 57 | 2.1.2 | 服务和服务实例接口开发 | 56 | start no earlier than 2017-05-26 | 白凯 | 8h |
| 58 | 2.1.3 | 服务管理功能开发 | 57 | start no earlier than 2017-05-26 | 白凯 | 24h |
| 59 | 2.1.4 | 服务实例管理功能开发 | 58 | start no earlier than 2017-05-26 | 白凯 | 32h |
| 60 | 2.2 | **权限管理功能开发** |  | start no earlier than 2017-05-25 |  |  |
| 61 | 2.2.1 | 四种角色控制框架设计 |  | start no earlier than 2017-05-26 | 虞里杉 | 24h |
| 62 | 2.2.2 | 系统管理员权限控制功能开发 | 61 | start no earlier than 2017-05-26 | 虞里杉 | 24h |
| 63 | 2.2.3 | 项目管理员权限控制功能开发 | 62 | start no earlier than 2017-05-26 | 虞里杉 | 16h |
| 64 | 2.2.4 | 普通用户权限控制功能开发 | 63 | start no earlier than 2017-05-26 | 虞里杉 | 16h |
| 65 | 2.3 | **租户管理功能开发** |  | start no earlier than 2017-05-25 |  |  |
| 66 | 2.3.1 | 租户接口设计 |  | start no earlier than 2017-05-26 | 赵一鸣 | 24h |
| 67 | 2.3.2 | 租户接口实现 | 66 | start no earlier than 2017-05-26 | 赵一鸣 | 24h |
| 68 | 2.3.3 | 租户查询 | 67 | start no earlier than 2017-05-26 | 赵一鸣 | 8h |
| 69 | 2.3.4 | 租户创建 | 68 | start no earlier than 2017-05-26 | 赵一鸣 | 32h |
| 70 | 2.3.5 | 租户修改 | 69 | start no earlier than 2017-05-26 | 赵一鸣 | 32h |
| 71 | 2.3.6 | 租户删除 |  | start no earlier than 2017-06-07 |  | 32h |
| 72 | 2.4 | **服务端配置管理，框架开发** | 7 | start no earlier than 2017-05-25 |  |  |
| 73 | 2.4.1 | 服务端Web服务器准备 |  | start no earlier than 2017-05-26 | 虞里杉 | 24h |
| 74 | 2.4.2 | 服务端开发框架准备 | 73 | start no earlier than 2017-05-26 | 虞里杉 | 32h |
| 75 | 2.4.3 | 服务端代码组织结构设计 | 74 | start no earlier than 2017-05-26 | 虞里杉 | 24h |
| 76 | 3 | **服务适配器开发** |  |  |  |  |
| 77 | 3.1 | **HDFS服务及服务实例开发** |  | start no earlier than 2017-06-01 |  |  |
| 78 | 3.1.1 | HDFS服务功能开发 |  | start no earlier than 2017-05-26 | 郭茜 | 32h |
| 79 | 3.1.2 | HDFS服务实例功能开发 | 78 | start no earlier than 2017-05-26 | 郭茜 | 32h |
| 80 | 3.1.3 | HDFS服务REST API实现 | 79 | start no earlier than 2017-05-26 | 郭茜 | 16h |

| ID | WBS | Task | Predecessors | Constraint | Resources | Work |
| --- | --- | --- | --- | --- | --- | --- |
| 81 | 3.2 | **YARN服务及服务实例开发** | 77 | start no earlier than 2017-06-01 |  |  |
| 82 | 3.2.1 | YARN服务功能开发 |  | start no earlier than 2017-05-26 | 郭茜 | 32h |
| 83 | 3.2.2 | YARN服务实例功能开发 | 82 | start no earlier than 2017-05-26 | 郭茜 | 32h |
| 84 | 3.2.3 | YARN服务REST API实现 | 83 | start no earlier than 2017-05-26 | 郭茜 | 16h |
| 85 | 3.3 | **HBase服务及服务实例开发** |  | start no earlier than 2017-06-01 |  |  |
| 86 | 3.3.1 | HBase服务功能开发 |  | start no earlier than 2017-05-26 | 王琛 | 32h |
| 87 | 3.3.2 | HBase服务实例功能开发 | 86 | start no earlier than 2017-05-26 | 王琛 | 32h |
| 88 | 3.3.3 | HBase服务REST API开发 | 87 | start no earlier than 2017-05-26 | 王琛 | 16h |
| 89 | 3.4 | **Hive服务及服务实例开发** | 85 | start no earlier than 2017-06-01 |  |  |
| 90 | 3.4.1 | Hive服务功能开发 |  | start no earlier than 2017-05-26 | 王琛 | 32h |
| 91 | 3.4.2 | Hive服务实例功能开发 | 90 | start no earlier than 2017-05-26 | 王琛 | 32h |
| 92 | 3.4.3 | Hive服务REST API实现 | 91 | start no earlier than 2017-05-26 | 王琛 | 16h |
| 93 | 3.5 | **Kafka服务及服务实例开发** | 55 | start no earlier than 2017-06-01 |  |  |
| 94 | 3.5.1 | Kafka服务功能开发 |  | start no earlier than 2017-05-26 | 白凯 | 32h |
| 95 | 3.5.2 | Kafka服务实例功能开发 | 94 | start no earlier than 2017-05-26 | 白凯 | 32h |
| 96 | 3.5.3 | Kafka服务REST API实现 | 95 | start no earlier than 2017-05-26 | 白凯 | 16h |
| 97 | 3.6 | **Oracle服务及服务实例开发** |  | start no earlier than 2017-06-01 |  |  |
| 98 | 3.6.1 | Oracle服务功能调研 |  | start no earlier than 2017-05-26 |  |  |
| 99 | 3.6.2 | Oracle服务实例功能调研 | 98 | start no earlier than 2017-05-26 |  |  |
| 100 | 3.6.3 | Oracle服务功能开发 | 99 | start no earlier than 2017-05-26 |  |  |
| 101 | 3.6.4 | Oracle服务实例功能开发 | 100 | start no earlier than 2017-05-26 |  |  |
| 102 | 3.6.5 | Oracle服务REST API实现 | 101 | start no earlier than 2017-05-26 |  |  |
| 103 | 3.6.6 | Oracle服务功能集成 | 102 | start no earlier than 2017-05-26 |  |  |
| 104 | 3.7 | **GreenPlum 服务及服务实例开发** |  | start no earlier than 2017-06-01 |  |  |
| 105 | 3.7.1 | GreenPlum服务功能调研 |  | start no earlier than 2017-05-26 | ？？ | 32h |
| 106 | 3.7.2 | GreenPlum 服务实例功能调研 | 105 | start no earlier than 2017-05-26 | ？？ | 32h |
| 107 | 3.7.3 | GreenPlum服务功能开发 | 106 | start no earlier than 2017-05-26 | ？？ | 32h |
| 108 | 3.7.4 | GreenPlum 服务实例功能开发 | 107 | start no earlier than 2017-05-26 | ？？ | 32h |
| 109 | 3.7.5 | GreenPlum 服务REST API实现 | 108 | start no earlier than 2017-05-26 | ？？ | 16h |
| 110 | 3.7.6 | GreenPlum服务功能集成 | 109 | start no earlier than 2017-05-26 | ？？ | 16h |

| ID | WBS | Task | Predecessors | Constraint | Resources | Work |
| --- | --- | --- | --- | --- | --- | --- |
| 111 | 3.8 | **MongoDB服务及服务实例开发** |  | start no earlier than 2017-06-01 |  |  |
| 112 | 3.8.1 | MongoDB服务功能调研 |  | start no earlier than 2017-05-26 | ？？ | 32h |
| 113 | 3.8.2 | MongoDB服务实例功能调研 | 112 | start no earlier than 2017-05-26 | ？？ | 32h |
| 114 | 3.8.3 | MongoDB服务功能开发 | 113 | start no earlier than 2017-05-26 | ？？ | 32h |
| 115 | 3.8.4 | MongoDB服务实例功能开发 | 114 | start no earlier than 2017-05-26 | ？？ | 32h |
| 116 | 3.8.5 | MongoDB服务REST API实现 | 115 | start no earlier than 2017-05-26 | ？？ | 16h |
| 117 | 3.8.6 | MongoDB服务功能集成 | 116 | start no earlier than 2017-05-26 | ？？ | 16h |
| 118 | 3.9 | **Neo4j服务及服务实例开发** |  | start no earlier than 2017-06-01 |  |  |
| 119 | 3.9.1 | Neo4j服务功能调研 |  | start no earlier than 2017-05-26 | 袁伟明 | 32h |
| 120 | 3.9.2 | Neo4j服务实例功能调研 | 119 | start no earlier than 2017-05-26 | 袁伟明 | 32h |
| 121 | 3.9.3 | Neo4j服务功能开发 | 120 | start no earlier than 2017-05-26 | 袁伟明 | 32h |
| 122 | 3.9.4 | Neo4j服务实例功能开发 | 121 | start no earlier than 2017-05-26 | 袁伟明 | 32h |
| 123 | 3.9.5 | Neo4j服务REST API实现 | 122 | start no earlier than 2017-05-26 | 袁伟明 | 16h |
| 124 | 3.9.6 | Neo4j服务功能集成 | 123 | start no earlier than 2017-05-26 | 袁伟明 | 16h |
| 125 | 3.10 | **RabbitMQ服务及服务实例开发** |  | start no earlier than 2017-06-01 |  |  |
| 126 | 3.10.1 | RabbitMQ服务功能调研 |  | start no earlier than 2017-05-26 | 刘旭 | 32h |
| 127 | 3.10.2 | RabbitMQ服务实例功能调研 | 126 | start no earlier than 2017-05-26 | 刘旭 | 32h |
| 128 | 3.10.3 | RabbitMQ服务功能开发 | 127 | start no earlier than 2017-05-26 | 刘旭 | 32h |
| 129 | 3.10.4 | RabbitMQ服务实例功能开发 | 128 | start no earlier than 2017-05-26 | 刘旭 | 32h |
| 130 | 3.10.5 | RabbitMQ服务RSET API实现 | 129 | start no earlier than 2017-05-26 | 刘旭 | 16h |
| 131 | 3.10.6 | RabbitMQ服务功能集成 | 130 | start no earlier than 2017-05-26 | 刘旭 | 16h |
| 132 | 4 | **与DACP调用接口开发** |  | start no earlier than 2017-06-01 |  |  |
| 133 | 4.1 | 与DACP调用接口沟通 |  | start no earlier than 2017-05-26 | 现场研发2？ | 8h |
| 134 | 4.2 | DACP接口调用 | 133 | start no earlier than 2017-05-26 | 现场研发2？ | 32h |

| ID | WBS | Task | Predecessors | Constraint | Resources | Work |
| --- | --- | --- | --- | --- | --- | --- |
| 135 | 5 | **与信云智交互过程开发** |  | start no earlier than 2017-06-01 |  |  |
| 136 | 5.1 | **提供REST API供信云智调用来获取服务列表** |  | start no earlier than 2017-05-25 |  |  |
| 137 | 5.1.1 | REST API接口设计 |  | start no earlier than 2017-05-26 | 赵一鸣 | 16h |
| 138 | 5.1.2 | REST API实现 | 137 | start no earlier than 2017-05-26 | 赵一鸣 | 24h |
| 139 | 5.2 | **提供REST API供信云智创建租户** | 136 | start no earlier than 2017-05-25 |  |  |
| 140 | 5.2.1 | REST API接口设计 |  | start no earlier than 2017-05-26 | 赵一鸣 | 16h |
| 141 | 5.2.2 | REST API实现 | 140 | start no earlier than 2017-05-26 | 赵一鸣 | 24h |
| 142 | 5.3 | **提供REST API供信云智查询租户** | 139 | start no earlier than 2017-05-26 |  |  |
| 143 | 5.3.1 | REST API接口设计 |  | start no earlier than 2017-05-26 | 赵一鸣 | 16h |
| 144 | 5.3.2 | REST API实现 | 143 | start no earlier than 2017-05-26 | 赵一鸣 | 24h |
| 145 | 5.4 | **提供REST API供信云智修改租户** | 132, 142 | start no earlier than 2017-05-25 |  |  |
| 146 | 5.4.1 | REST API接口设计 |  | start no earlier than 2017-05-26 | 赵一鸣 | 16h |
| 147 | 5.4.2 | REST API实现 | 146 | start no earlier than 2017-05-26 | 赵一鸣 | 24h |
| 148 | 6 | **需求变更任务** |  | start no earlier than 2017-06-06 |  |  |
| 149 | 6.1 | 子公司用户权限控制 |  | start no earlier than 2017-06-07 |  | 24h |
| 150 | 6.2 | 用户列表页面 |  | start no earlier than 2017-06-07 |  | 40h |
| 151 | 6.3 | 用户添加 | 150 | start no earlier than 2017-06-07 |  | 32h |
| 152 | 6.4 | 子公司资源报告 | 151 | start no earlier than 2017-06-07 |  | 24h |
| 153 | 6.5 | 集团资源报告 | 152 | start no earlier than 2017-06-07 |  | 24h |
| 154 | 6.6 | **中信云访问资源报告页面** |  | start no earlier than 2017-06-06 |  |  |
| 155 | 6.6.1 | 资源报告页面可定制化，根据服务实例ID来动态展示 |  | start no earlier than 2017-06-07 |  |  |
| 156 | 6.6.2 | 中信云中嵌入资源报告页面 | 155 | start no earlier than 2017-06-07 |  |  |
| 157 | 6.7 | **用户授权完成发邮件** | 154 | start no earlier than 2017-06-06 |  |  |
| 158 | 6.7.1 | 配置邮件服务器信息，后台配置 |  | start no earlier than 2017-06-07 | 现场研发1？ | 8h |
| 159 | 6.7.2 | 发送邮件功能开发，启动一个线程后台运行 | 158 | start no earlier than 2017-06-07 | 现场研发1？ | 24h |
| 160 | 6.7.3 | 授权完成触发邮件发送 | 159 | start no earlier than 2017-06-07 | 现场研发1？ | 16h |

| ID | WBS | Task | Predecessors | Constraint | Resources | Work |
| --- | --- | --- | --- | --- | --- | --- |
| 161 | 7 | **其它** |  | start no earlier than 2017-06-07 |  |  |
| 162 | 7.1 | **需求分析** |  | start no earlier than 2017-06-07 |  |  |
| 163 | 7.1.1 | 客户需求理解，前期准备 |  | start no earlier than 2017-06-07 | 王栋 | 32h |
| 164 | 7.1.2 | 需求讨论，分析 |  | start no earlier than 2017-06-07 | 王栋 | 24h |
| 165 | 7.2 | **架构设计** |  | start no earlier than 2017-06-07 |  |  |
| 166 | 7.2.1 | 租户模型设计 |  | start no earlier than 2017-06-07 | 王栋 | 32h |
| 167 | 7.2.2 | 架构设计 |  | start no earlier than 2017-06-07 | 王栋 | 32h |
| 168 | 7.2.3 | 前端页面原型开发 |  | start no earlier than 2017-06-07 | 王栋 | 120h |
| 169 | 7.2.4 | 实现方案论证 |  | start no earlier than 2017-06-07 | 王栋 | 40h |
| 170 | 7.3 | 工作计划编写 |  | start no earlier than 2017-06-07 | 王栋 | 40h |
| 171 | 7.4 | 项目沟通协调 |  | start no earlier than 2017-06-07 | 王栋 |  |
| 172 | 8 | Service Broker重构 |  | start no earlier than 2017-06-08 | 柴宗三 | 120h |
| 173 | 9 | **资源监控数据收集框架开发** |  | start no earlier than 2017-06-09 |  |  |
| 174 | 9.1 | HDFS按实例收集资源使用信息 |  | start no earlier than 2017-06-09 | 现场研发3？ | 24h |
| 175 | 9.2 | YARN按实例收集资源使用信息 | 174 | start no earlier than 2017-06-09 | 现场研发3？ | 24h |
| 176 | 9.3 | HBase按实例收集资源使用信息 | 175 | start no earlier than 2017-06-09 | 现场研发3？ | 24h |
| 177 | 9.4 | HIve按实例收集资源使用信息 | 176 | start no earlier than 2017-06-09 | 现场研发3？ | 24h |
| 178 | 9.5 | Kafka按实例收集资源使用信息 | 177 | start no earlier than 2017-06-09 | 现场研发3？ | 24h |
| 179 | 9.6 | GreenPlum按实例收集资源使用信息 |  | start no earlier than 2017-06-09 | 现场研发4？ | 64h |
| 180 | 9.7 | MongoDB按实例收集资源使用信息 | 179 | start no earlier than 2017-06-09 | 现场研发4？ | 64h |
| 181 | 9.8 | Neo4j按实例收集资源使用信息 |  | start no earlier than 2017-06-09 | 现场研发5？ | 40h |
| 182 | 9.9 | RabbitMQ按实例收集资源使用信息 | 181 | start no earlier than 2017-06-09 | 现场研发5？ | 40h |
| 183 | 9.10 | 按实例获取资源使用信息REST API | 182 | start no earlier than 2017-06-09 | 现场研发5？ | 40h |
